# CSM 4.0

Schedule from MS Project, 2007-01-16 to 2007-07-23, A marks actual dates.
NCI

## Calendars

- Standard: Mon-Fri 08:00-12:00, 13:00-17:00; Sat-Sun off. Exceptions (off unless hours are given): 2007-02-05 to 2007-02-07.

## Resources

| Resource |
| --- |
| Kunal |
| Vijay |
| Charles |
| Avinash |
| Steve |
| KunalKunalK |
| QA |
| Kuanl |
| caGRID |
| Satish |

## Schedule

| ID | WBS | Task | Type | Duration | Start | Finish | Predecessors | Complete | Remaining | Total slack | Free slack | Constraint | Resources | Work | Actual work |
| --- | --- | --- | --- | --- | --- | --- | --- | --- | --- | --- | --- | --- | --- | --- | --- |
| 1 | 1 | **CSM v4.0** |  | 132d? | 2007-01-16 A | 2007-07-23 |  | 12% | 116.24d? | 0d |  |  |  | 1826h | 326.49h |
| 2 | 1.1 | **Inception** |  | 3d | 2007-01-19 A | 2007-01-23 A |  | 100% |  |  |  |  |  | 8h | 8h |
| 3 | 1.1.1 | 4.0 Kickoff meeting | milestone | 0d | 2007-01-19 A | 2007-01-19 A |  | 100% |  |  |  | start no earlier than 2007-01-19 | Kunal; Charles; Steve |  |  |
| 4 | 1.1.2 | Create initial task plan |  | 1d | 2007-01-23 A | 2007-01-23 A |  | 100% |  |  |  |  | Kunal | 8h | 8h |
| 5 | 1.2 | **Support** |  | 27d? | 2007-01-23 A | 2007-03-05 |  | 25% | 20.25d? | 100d |  |  | Kunal [20%] | 168h | 116.49h |
| 6 | 1.2.1 | Application Support |  | 27d? | 2007-01-23 | 2007-03-05 |  |  |  | 100d |  | start no earlier than 2007-01-23 | Kunal [10%] | 21.6h |  |
| 7 | 1.2.2 | Support for caBIG Activities |  | 9d? | 2007-01-23 A | 2007-02-02 A |  | 100% |  |  |  | start no earlier than 2007-01-23 | Kunal [10%] | 7.2h | 7.2h |
| 8 | 1.2.3 | Attend caBIG Conference | milestone | 0d? | 2007-02-05 A | 2007-02-07 A | 7 | 100% |  |  |  | start no earlier than 2007-02-05 | Kunal [42.1%]; Vijay [42.1%]; Charles [42.1%]; Steve [42.1%] | 96h | 96h |
| 9 | 1.3 | **Eloboration** |  | 132d? | 2007-01-16 A | 2007-07-23 |  | 10% | 119.24d? | 0d |  |  |  | 1650h | 202h |
| 10 | 1.3.1 | **Requiements Gathering** |  | 6.25d | 2007-01-19 A | 2007-01-29 |  | 91% | 0.57d | 122.75d |  |  |  | 22h | 20h |
| 11 | 1.3.1.1 | caCORE User's Meeting + Preperation |  | 1.25d | 2007-01-19 A | 2007-01-22 A |  | 100% |  |  |  | start no earlier than 2007-01-19 | Kunal | 10h | 10h |
| 12 | 1.3.1.2 | Requirements Meeting (BRN/caArray) |  | 0.25d | 2007-01-24 | 2007-01-24 |  |  |  | 125.75d |  | start no earlier than 2007-01-24 | Kunal | 2h |  |
| 13 | 1.3.1.3 | Requirements meeting (iSPY, Rembrandt, CGEMS) |  | 0.25d | 2007-01-25 A | 2007-01-25 A |  | 100% |  |  |  | start no earlier than 2007-01-25 | Kunal | 2h | 2h |
| 14 | 1.3.1.4 | Requirements meeting (caCORE, SDK) |  | 0.25d | 2007-01-25 A | 2007-01-25 A |  | 100% |  |  |  | start no earlier than 2007-01-25 | Kunal | 2h | 2h |
| 15 | 1.3.1.5 | Requirements meeting (SPORES, caMOD) |  | 0.25d | 2007-01-26 A | 2007-01-26 A |  | 100% |  |  |  | start no earlier than 2007-01-26 | Kunal | 2h | 2h |
| 16 | 1.3.1.6 | Requirements meeting (BMS) |  | 0.25d | 2007-01-26 A | 2007-01-26 A |  | 100% |  |  |  | start no earlier than 2007-01-26 | Kunal | 2h | 2h |
| 17 | 1.3.1.7 | Requirements meeting (caGRID) |  | 0.25d | 2007-01-29 A | 2007-01-29 A |  | 100% |  |  |  | start no earlier than 2007-01-29 | Kunal | 2h | 2h |
| 18 | 1.3.2 | **Scope Document** |  | 8d | 2007-01-26 A | 2007-02-09 |  | 90% | 0.8d | 116d |  |  |  | 96h | 84h |
| 19 | 1.3.2.1 | Prepare list of scope items on gforge |  | 1d | 2007-01-26 A | 2007-01-26 |  | 50% | 0.5d | 123d |  | start no earlier than 2007-01-26 | Kunal | 8h | 4h |
| 20 | 1.3.2.2 | Draft scope document |  | 3d | 2007-01-29 A | 2007-01-31 A | 19 | 100% |  |  |  |  | Charles | 24h | 24h |
| 21 | 1.3.2.3 | Estimate LOE for Itertion 1 & 2 scope items |  | 1d | 2007-02-01 A | 2007-02-01 A | 20 | 100% |  |  |  |  | Kunal | 8h | 8h |
| 22 | 1.3.2.4 | Prepare risk list |  | 1d | 2007-02-02 A | 2007-02-02 | 21 | 50% | 0.5d | 118d |  |  | Charles; Kunal | 16h | 8h |
| 23 | 1.3.2.5 | NCICB Review of scope document |  | 2d | 2007-02-01 A | 2007-02-05 A | 20 | 100% |  |  |  |  | Avinash [150%] | 24h | 24h |
| 24 | 1.3.2.6 | Revise scope document |  | 2d | 2007-02-08 A | 2007-02-09 A | 23, 8 | 100% |  |  |  |  | Kunal | 16h | 16h |
| 25 | 1.3.2.7 | Finalize Scope | milestone | 0d | 2007-02-09 | 2007-02-09 | 24 |  |  | 111d | 0d |  | Kunal; Charles |  |  |

| ID | WBS | Task | Duration | Start | Finish | Predecessors | Complete | Remaining | Total slack | Free slack | Constraint | Resources | Work | Actual work |
| --- | --- | --- | --- | --- | --- | --- | --- | --- | --- | --- | --- | --- | --- | --- |
| 26 | 1.3.3 | **QA Actvities** | 5d | 2007-02-12 | 2007-02-16 |  |  |  | 111d |  |  |  | 40h |  |
| 27 | 1.3.3.1 | Requirement Analysis | 2d | 2007-02-12 | 2007-02-13 | 25 |  |  | 111d | 0d |  | QA | 16h |  |
| 28 | 1.3.3.2 | Overall Test Plan Creation | 3d | 2007-02-14 | 2007-02-16 | 27 |  |  | 111d |  |  | QA | 24h |  |
| 29 | 1.3.5 | Revise task plan | 1d? | 2007-01-23 | 2007-01-23 |  |  |  | 126d |  |  | Charles | 8h |  |
| 30 | 1.3.6 | **Construction** | 127d | 2007-01-16 A | 2007-07-16 |  | 6% | 119.3d | 5d |  |  |  | 1084h | 98h |
| 31 | 1.3.6.1 | **Iteration 1** | 38d | 2007-01-16 A | 2007-03-13 |  | 27% | 27.66d | 94d |  |  |  | 356h | 98h |
| 32 | 1.3.6.1.1 | CSM Application Developers Guide Update | 5d | 2007-01-16 A | 2007-01-22 |  | 85% | 0.75d | 127d |  | start no earlier than 2007-01-16 | Vijay | 40h | 34h |
| 33 | 1.3.6.1.2 | Regression Junit Development | 8d | 2007-01-23 A | 2007-02-01 A | 32 | 100% |  |  |  |  | Vijay | 64h | 64h |
| 34 | 1.3.5.1.3 | CSM Bug Fixes (GF#3794) | 6d | 2007-02-02 | 2007-02-14 | 33 |  |  | 5d | 0d |  | Vijay | 48h |  |
| 35 | 1.3.5.1.4 | **CSM caGRID Integration** | 13d | 2007-02-14 | 2007-03-02 |  |  |  | 76d |  |  |  | 116h |  |
| 36 | 1.3.5.1.4.1 | **Client Session is singleton which is enforcing the CSM caGrid Integration project to use snychornization** | 13d | 2007-02-14 | 2007-03-02 |  |  |  | 101d |  |  |  | 40h |  |
| 37 | 1.3.5.1.4.1.1 | Design | 4d | 2007-02-14 | 2007-02-19 |  |  |  | 110d |  | start no earlier than 2007-02-14 | Kunal [50%] | 16h |  |
| 38 | 1.3.5.1.4.1.2 | Development | 3d | 2007-02-28 | 2007-03-02 | 43 |  |  | 101d |  |  | Kunal | 24h |  |
| 39 | 1.3.5.1.4.2 | **Upgrade the CSM/caGRID integration to use new functionality of CSM 3.2** | 10d | 2007-02-14 | 2007-02-27 |  |  |  | 76d |  |  |  | 76h |  |
| 40 | 1.3.5.1.4.2.1 | Design | 4d | 2007-02-14 | 2007-02-19 |  |  |  | 76d | 0d | start no earlier than 2007-02-14 | Kuanl [50%] | 16h |  |
| 41 | 1.3.5.1.4.2.2 | Design Review | 0.5d | 2007-02-20 | 2007-02-20 | 40 |  |  | 76d | 0d |  | caGRID; Satish; Avinash; Kunal | 16h |  |
| 42 | 1.3.5.1.4.2.3 | Design update | 0.5d | 2007-02-20 | 2007-02-20 | 41 |  |  | 76d | 0d |  | Kunal | 4h |  |
| 43 | 1.3.5.1.4.2.4 | Development | 5d | 2007-02-21 | 2007-02-27 | 42 |  |  | 76d | 0d |  | Kunal | 40h |  |
| 44 | 1.3.5.1.5 | **QA** | 5d | 2007-03-06 | 2007-03-12 |  |  |  | 94d | 0d |  |  | 64h |  |
| 45 | 1.3.5.1.5.1 | Test Execution (In Sync With SDK Testing) | 5d | 2007-03-06 | 2007-03-12 |  |  |  | 94d |  | start no earlier than 2007-03-06 | QA | 40h |  |
| 46 | 1.3.5.1.5.2 | Test Support | 3d | 2007-03-06 | 2007-03-08 |  |  |  | 96d |  | start no earlier than 2007-03-06 | Kunal | 24h |  |
| 47 | 1.3.5.1.6 | **Iteration Plan** | 1d | 2007-03-13 | 2007-03-13 |  |  |  | 94d |  |  |  | 24h |  |
| 48 | 1.3.5.1.6.1 | Review Client Feature Request/Revise Task Plan | 1d | 2007-03-13 | 2007-03-13 | 44 |  |  | 94d |  |  | Charles; Avinash; Satish | 24h |  |
| 49 | 1.3.5.2 | **Iteration 2** | 40d | 2007-02-15 | 2007-04-11 |  |  |  | 5d |  |  |  | 704h |  |
| 50 | 1.3.5.2.1 | **Release 4.0 Beta 1** | 40d | 2007-02-15 | 2007-04-11 |  |  |  | 5d |  |  |  | 704h |  |
| 51 | 1.3.5.2.1.1 | **Instance Level Security** | 25d | 2007-02-28 | 2007-04-03 |  |  |  | 76d | 0d |  |  | 200h |  |
| 52 | 1.3.5.2.1.1.1 | Design | 7d | 2007-02-28 | 2007-03-08 | 43 |  |  | 76d | 0d |  | Kunal | 56h |  |
| 53 | 1.3.5.2.1.1.2 | Development | 18d | 2007-03-09 | 2007-04-03 | 52 |  |  | 76d |  |  | Kunal | 144h |  |
| 54 | 1.3.5.2.1.2 | Assist BMS to Upgrade to CSM 3.2 to come on the same version to intiate co development | 3d | 2007-04-04 | 2007-04-06 | 51 |  |  | 76d |  |  | Kunal | 24h |  |
| 55 | 1.3.5.2.1.3 | Query optimization and corrections to queries | 6d | 2007-02-15 | 2007-02-22 | 34 |  |  | 5d | 0d |  | Vijay | 48h |  |
| 56 | 1.3.5.2.1.4 | Support Digital Certificates as credentials | 6d | 2007-02-23 | 2007-03-02 | 55 |  |  | 5d | 0d |  | Vijay | 48h |  |
| 57 | 1.3.5.2.1.5 | AuthenticationManager to correctly use the user provided lockout parameters | 1d | 2007-03-05 | 2007-03-05 | 56 |  |  | 5d | 0d |  | Vijay | 8h |  |
| 58 | 1.3.5.2.1.6 | UPT Fixes | 3d | 2007-03-06 | 2007-03-08 | 57 |  |  | 5d | 0d |  | Vijay | 24h |  |
| 59 | 1.3.5.2.1.7 | Merge User Provisioning Manager & Authorization Manager Interfaces | 3d | 2007-03-09 | 2007-03-13 | 58 |  |  | 5d | 0d |  | Vijay | 24h |  |
| 60 | 1.3.5.2.1.8 | Improve Installation for CSM and UPT especially | 3d | 2007-03-14 | 2007-03-16 | 59 |  |  | 5d | 0d |  | Vijay | 24h |  |
| 61 | 1.3.5.2.1.9 | Support Postgres Database | 4d | 2007-03-19 | 2007-03-22 | 60 |  |  | 5d | 0d |  | Vijay | 32h |  |
| 62 | 1.3.5.2.1.10 | Have a capability of Associating only the Roles to a User or Group | 4d | 2007-03-23 | 2007-03-28 | 61 |  |  | 5d | 0d |  | Vijay | 32h |  |

| ID | WBS | Task | Type | Duration | Start | Finish | Predecessors | Total slack | Free slack | Constraint | Resources | Work |
| --- | --- | --- | --- | --- | --- | --- | --- | --- | --- | --- | --- | --- |
| 63 | 1.3.5.2.1.11 | **QA** |  | 24d | 2007-03-09 | 2007-04-11 |  | 19d |  |  |  | 200h |
| 64 | 1.3.5.2.1.11.1 | Test Development |  | 10d | 2007-03-09 | 2007-03-22 | 52 | 87d |  |  | QA | 80h |
| 65 | 1.3.5.2.1.11.2 | Test Execution |  | 10d | 2007-03-29 | 2007-04-11 | 62 | 73d |  |  | QA | 80h |
| 66 | 1.3.5.2.1.11.3 | Test Support |  | 5d | 2007-03-29 | 2007-04-04 | 62 | 5d | 0d |  | Vijay | 40h |
| 67 | 1.3.5.2.1.12 | Release Packaging |  | 2d | 2007-04-05 | 2007-04-06 | 66 | 5d | 0d |  | Vijay | 16h |
| 68 | 1.3.5.2.1.13 | Release 4.0 Beta 1 | milestone | 0d | 2007-04-06 | 2007-04-06 | 67 | 5d | 0d |  |  |  |
| 69 | 1.3.5.2.1.14 | **Iteration Plan** |  | 1d | 2007-04-09 | 2007-04-09 |  | 75d |  |  |  | 24h |
| 70 | 1.3.5.2.1.14.1 | Review Client Feature Request/Revise Task Plan |  | 1d | 2007-04-09 | 2007-04-09 | 68 | 75d |  |  | Charles; Avinash; Satish | 24h |
| 71 | 1.3.5.3 | **Iteration 3** |  | 26d | 2007-04-09 | 2007-05-14 |  | 5d |  |  |  | 24h |
| 72 | 1.3.5.3.1 | Release 4.0 Beta 2 |  | 25d | 2007-04-09 | 2007-05-11 | 68 | 5d | 0d |  |  |  |
| 73 | 1.3.5.3.2 | **Iteration Plan** |  | 1d | 2007-05-14 | 2007-05-14 |  | 5d | 0d |  |  | 24h |
| 74 | 1.3.5.3.2.1 | Review Client Feature Request/Revise Task Plan |  | 1d | 2007-05-14 | 2007-05-14 | 72 | 5d |  |  | Charles; Avinash; Satish | 24h |
| 75 | 1.3.5.4 | **Iteration 4** |  | 25d | 2007-05-15 | 2007-06-18 |  | 5d | 0d |  |  |  |
| 76 | 1.3.5.4.1 | Release 4.0 Beta 2 |  | 25d | 2007-05-15 | 2007-06-18 | 73 | 5d |  |  |  |  |
| 77 | 1.3.5.5 | Integration Test |  | 10d | 2007-06-19 | 2007-07-02 | 75 | 5d | 0d |  |  |  |
| 78 | 1.3.5.6 | UAT Test |  | 10d | 2007-07-03 | 2007-07-16 | 77 | 5d |  |  |  |  |
| 79 | 1.3.7 | **Transition** |  | 25d | 2007-06-19 | 2007-07-23 |  | 0d |  |  |  | 400h |
| 80 | 1.3.6.1 | **Documentation** |  | 25d | 2007-06-19 | 2007-07-23 |  | 0d |  |  |  | 400h |
| 81 | 1.3.7.1.1 | New technical guide |  | 10d | 2007-06-19 | 2007-07-02 |  | 0d |  | start no earlier than 2007-06-19 | Vijay; Kunal | 160h |
| 82 | 1.3.7.1 | New users guide |  | 10d | 2007-07-03 | 2007-07-16 | 81 | 0d |  |  | Vijay; Kunal | 160h |
| 83 | 1.3.7.1.2 | How to example |  | 5d | 2007-07-17 | 2007-07-23 | 82 | 0d |  |  | Vijay; Kunal | 80h |
| 84 | 1.3.7.1.3 | 4.0 Release Complete | milestone | 0d | 2007-07-23 | 2007-07-23 | 80 | 0d |  |  |  |  |
