# CSM 3.1

Schedule from MS Project, 2005-08-01 to 2006-02-15, A marks actual dates.
NCI

## Calendars

- Standard: Mon-Fri 08:00-12:00, 13:00-17:00; Sat-Sun off. Exceptions (off unless hours are given): 2005-11-11, 2005-11-24 to 2005-11-25, 2005-12-26, 2006-01-02.

## Resources

| Resource |
| --- |
| Vinay |
| Kunal |
| Charles |
| Eric |
| Avinash |
| 100 |
| SAIC |
| Resource 4 |
| Team |

## Schedule

| ID | WBS | Task | Type | Duration | Start | Finish | Predecessors | Complete | Remaining | Total slack | Constraint | Resources | Work | Actual work |
| --- | --- | --- | --- | --- | --- | --- | --- | --- | --- | --- | --- | --- | --- | --- |
| 1 | 1 | **CSM Post Release** |  | 35.25d | 2005-08-01 A | 2005-09-19 |  | 85% | 5.24d | 102.15d |  |  | 815.96h | 785.16h |
| 2 | 1.1 | **Production Support** |  | 22d | 2005-08-01 A | 2005-08-30 A |  | 100% |  |  |  |  | 132h | 132h |
| 3 | 1.1.1 | Support Activities |  | 22d | 2005-08-01 A | 2005-08-30 A |  | 100% |  |  |  | Vinay [25%]; Kunal [25%]; Eric [25%] | 132h | 132h |
| 4 | 1.2 | **Meetings** |  | 3.2d | 2005-08-01 A | 2005-08-04 A |  | 100% |  |  |  |  | 12.8h | 12.8h |
| 5 | 1.2.1 | Status Meeting |  | 0.1d | 2005-08-01 A | 2005-08-01 A |  | 100% |  |  |  | Vinay; Kunal; Charles; Eric | 3.2h | 3.2h |
| 6 | 1.2.2 | IBM |  | 0.2d | 2005-08-01 A | 2005-08-01 A |  | 100% |  |  |  | Vinay; Kunal; Charles | 4.8h | 4.8h |
| 7 | 1.2.3 | IBM |  | 0.2d | 2005-08-04 A | 2005-08-04 A |  | 100% |  |  | start no earlier than 2005-08-04 | Vinay; Kunal; Charles | 4.8h | 4.8h |
| 8 | 1.3 | Post Release Analysis |  | 1d | 2005-08-11 A | 2005-08-11 A |  | 100% |  |  | start no earlier than 2005-08-11 | Kunal [25%]; Vinay [75%]; Eric [75%] | 14h | 14h |
| 9 | 1.4 | **Presentations/Conferences** |  | 15d | 2005-08-01 A | 2005-08-19 A |  | 100% |  |  |  |  | 184.4h | 184.4h |
| 10 | 1.4.1 | **Preparation** |  | 10d | 2005-08-01 A | 2005-08-12 A |  | 100% |  |  |  |  | 82.4h | 82.4h |
| 11 | 1.4.1.1 | Developer's Boot Camp Presentation |  | 3d | 2005-08-01 A | 2005-08-03 A |  | 100% |  |  |  | Kunal [25%]; Vinay [75%]; Eric [75%] | 22h | 22h |
| 12 | 1.4.1.2 | caCore Architecture Meeting |  | 2d | 2005-08-04 A | 2005-08-05 A | 11 | 100% |  |  |  | Kunal [25%]; Vinay [75%]; Eric [75%] | 28h | 28h |
| 13 | 1.4.1.3 | Review |  | 0.3d | 2005-08-09 A | 2005-08-09 A |  | 100% |  |  | start no earlier than 2005-08-09 | Kunal [75%]; Vinay [75%]; Eric [75%] | 5.4h | 5.4h |
| 14 | 1.4.1.4 | Update |  | 2.5d | 2005-08-09 A | 2005-08-11 A | 13 | 100% |  |  |  | Eric [75%] | 15h | 15h |
| 15 | 1.4.1.5 | Installation Test |  | 1d | 2005-08-12 A | 2005-08-12 A |  | 100% |  |  | start no earlier than 2005-08-12 | Vinay [75%]; Kunal [75%] | 12h | 12h |
| 16 | 1.4.2 | Developer Boot Camp Presentation (NCICB) |  | 1d | 2005-08-15 A | 2005-08-15 A | 10 | 100% |  |  |  | Vinay [75%]; Kunal [75%] | 12h | 12h |
| 17 | 1.4.3 | caBig Architecture F2F |  | 3d | 2005-08-16 A | 2005-08-18 A | 16 | 100% |  |  |  | Vinay [75%]; Kunal [75%]; Eric [75%] | 54h | 54h |
| 18 | 1.4.4 | Developer Boot Camp |  | 2d | 2005-08-18 A | 2005-08-19 A |  | 100% |  |  | start no earlier than 2005-08-18 | Vinay [75%]; Kunal [75%]; Eric [75%] | 36h | 36h |
| 19 | 1.5 | **Best Practices** |  | 3d | 2005-08-08 A | 2005-08-11 A |  | 100% |  |  |  |  | 18h | 18h |
| 20 | 1.5.1 | Create SOP Documents |  | 3d | 2005-08-08 A | 2005-08-11 A | 13FS-1d | 100% |  |  |  | Vinay [75%] | 18h | 18h |
| 21 | 1.6 | SDK Defect Fix/Documentation Update |  | 3d | 2005-08-03 A | 2005-08-05 A |  | 100% |  |  | finish no earlier than 2005-08-08 | Kunal | 18h | 18h |
| 22 | 1.7 | SdK Testing/Documentation Update |  | 5d | 2005-08-08 A | 2005-08-12 A | 21 | 100% |  |  |  | Kunal [50%]; Eric [50%] | 21.33h | 21.33h |
| 23 | 1.8 | Production | milestone | 0d | 2005-08-25 A | 2005-08-25 A |  | 100% |  |  | start no earlier than 2005-08-25 | Kunal |  |  |
| 24 | 1.9 | **Open Source Initiative** |  | 4d | 2005-08-22 A | 2005-08-25 |  | 25% | 3d | 121.25d |  |  | 24h | 6h |
| 25 | 1.9.1 | Define Approach |  | 1d | 2005-08-22 A | 2005-08-22 A | 18 | 100% |  |  |  | Kunal [75%] | 6h | 6h |
| 26 | 1.9.2 | List OS Items for Development |  | 3d | 2005-08-23 | 2005-08-25 | 25 |  |  | 121.25d |  | Kunal [75%] | 18h |  |

| ID | WBS | Task | Type | Duration | Start | Finish | Predecessors | Complete | Remaining | Total slack | Free slack | Constraint | Resources | Work | Actual work |
| --- | --- | --- | --- | --- | --- | --- | --- | --- | --- | --- | --- | --- | --- | --- | --- |
| 27 | 1.10 | **Reference Implementation** |  | 1d | 2005-08-02 A | 2005-08-02 A |  | 100% |  |  |  |  |  | 6h | 6h |
| 28 | 1.10.1 | WrapUp Work |  | 1d | 2005-08-02 A | 2005-08-02 A |  | 100% |  |  |  | start no earlier than 2005-08-02 | Kunal [75%] | 6h | 6h |
| 29 | 1.11 | **Requirement Gathering/Scope** |  | 18.25d | 2005-08-22 A | 2005-09-15 | 9 | 99% | 0d | 0d |  |  |  | 308.5h | 308.5h |
| 30 | 1.11.1 | Gather/Writeup Requirements |  | 7d | 2005-08-22 A | 2005-08-30 A |  | 100% |  |  |  |  | Vinay [75%]; Kunal [75%]; Eric [75%] | 126h | 126h |
| 31 | 1.11.2 | Internal Review/Updates |  | 2d | 2005-08-31 A | 2005-09-01 A | 30 | 100% |  |  |  |  | Vinay [75%]; Kunal [75%]; Eric [75%] | 36h | 36h |
| 32 | 1.11.3 | Estimation |  | 5d | 2005-09-02 A | 2005-09-08 A | 31 | 100% |  |  |  |  | Vinay [75%]; Kunal [75%]; Eric [75%] | 90h | 90h |
| 33 | 1.11.4 | Requirements Prioritization |  | 0.25d | 2005-09-09 A | 2005-09-09 A | 32 | 100% |  |  |  |  | Avinash; Vinay [75%]; Kunal [75%]; Charles; Eric [75%] | 8.5h | 8.5h |
| 34 | 1.11.5 | Scope Document Development |  | 4d | 2005-09-09 A | 2005-09-15 A | 33 | 100% |  |  |  |  | Vinay [50%]; Kunal [50%]; Eric [50%] | 48h | 48h |
| 35 | 1.11.6 | Scope Document SignOff | milestone | 0d | 2005-09-15 | 2005-09-15 | 34 |  |  | 0d |  |  | Avinash; Charles; Vinay |  |  |
| 36 | 1.12 | **Planning** |  | 17.25d | 2005-08-25 A | 2005-09-19 |  | 37% | 10.86d | 102.15d |  |  |  | 76.93h | 64.13h |
| 37 | 1.12.1 | Project Plan |  | 10d | 2005-08-25 | 2005-09-07 |  |  |  | 112.05d | 0d | start no earlier than 2005-08-25 | Charles [10%] | 8h |  |
| 38 | 1.12.2 | Project Plan Review |  | 0.2d | 2005-09-08 | 2005-09-08 | 37 |  |  | 112.05d |  |  | Charles; Avinash; Vinay | 4.8h |  |
| 39 | 1.12.3 | Task Plan |  | 5d | 2005-09-09 A | 2005-09-16 A | 33 | 100% |  |  |  |  | Charles [10%]; Vinay [25%]; Kunal [25%]; Eric [25%] | 30.13h | 30.13h |
| 40 | 1.12.4 | Task Plan Review |  | 1d | 2005-09-16 A | 2005-09-19 A | 39 | 100% |  |  |  |  | Avinash; Vinay [75%]; Kunal [75%]; Charles; Eric [75%] | 34h | 34h |
| 41 | 1.12.5 | Task Plan SignOff | milestone | 0d | 2005-09-19 | 2005-09-19 | 40 |  |  | 105d | 0d |  | Avinash; Charles |  |  |
| 42 | 1.12.6 | Project Plan SignOff | milestone | 0d | 2005-09-19 | 2005-09-19 | 41 |  |  | 105d |  |  | Avinash; Charles |  |  |
| 43 | 2 | **CSM 3.1** |  | 104.15d | 2005-09-15 A | 2006-02-15 | 35 |  | 103.81d | 0d |  |  |  | 3014.08h | 16h |
| 44 | 2.1 | Production Support |  | 97d | 2005-09-15 | 2006-02-15 |  |  |  | 0.15d |  |  | Kunal [25%] | 194h |  |
| 45 | 2.2 | Gforge Support |  | 104d | 2005-09-15 | 2006-02-15 |  |  |  | 0.15d |  |  | Team [5%] | 41.6h |  |
| 46 | 2.3 | Best Practices/SOPs |  | 104d | 2005-09-15 | 2006-02-15 |  |  |  | 0.15d |  |  | Vinay [50%] | 416h |  |
| 47 | 2.4 | **Elaboration Phase** |  | 56.4d | 2005-09-15 A | 2005-12-07 | 35 | 2% | 55.04d | 47.75d |  |  |  | 663.24h | 16h |
| 48 | 2.4.1 | **Iteration 1** |  | 9.2d | 2005-09-15 A | 2005-09-28 |  | 12% | 8.09d | 25.15d |  |  |  | 131.6h | 16h |
| 49 | 2.4.1.1 | **Analysis & Design** |  | 9.2d | 2005-09-15 A | 2005-09-28 |  | 12% | 8.09d | 25.15d |  |  |  | 131.6h | 16h |
| 50 | 2.4.1.1.1 | **SDK Integration** |  | 9.2d | 2005-09-15 A | 2005-09-28 |  | 12% | 8.09d | 25.15d |  |  |  | 131.6h | 16h |
| 51 | 2.4.1.1.1.1 | Documentation & Training Bootcamp |  | 2d | 2005-09-15 A | 2005-09-19 A |  | 100% |  |  |  |  | Eric | 16h | 16h |

| ID | WBS | Task | Type | Duration | Start | Finish | Predecessors | Total slack | Free slack | Constraint | Resources | Work |
| --- | --- | --- | --- | --- | --- | --- | --- | --- | --- | --- | --- | --- |
| 52 | 2.4.1.1.1.2 | **Detail Use Case Development** |  | 7.2d | 2005-09-19 | 2005-09-28 |  | 25.15d | 0d |  |  | 60.8h |
| 53 | 2.4.1.1.1.2.1 | Use Cases |  | 6d | 2005-09-19 | 2005-09-27 | 51 | 25.15d | 0d |  | Eric | 48h |
| 54 | 2.4.1.1.1.2.2 | Use Case Review |  | 0.2d | 2005-09-27 | 2005-09-27 | 53 | 25.15d | 0d |  | Eric; Kunal; Vinay | 4.8h |
| 55 | 2.4.1.1.1.2.3 | Update/Baseline Use Cases |  | 1d | 2005-09-27 | 2005-09-28 | 54 | 25.15d |  |  | Eric | 8h |
| 56 | 2.4.1.1.1.3 | **Design** |  | 7.4d | 2005-09-15 | 2005-09-26 |  | 0d |  |  |  | 54.8h |
| 57 | 2.4.1.1.1.3.1 | Detail Design |  | 6d | 2005-09-15 | 2005-09-23 |  | 0d |  |  | Kunal [75%] | 36h |
| 58 | 2.4.1.1.1.3.2 | SAD Update Draft Complete | milestone | 0d | 2005-09-23 | 2005-09-23 | 57 | 0d |  |  | Kunal [75%] |  |
| 59 | 2.4.1.1.1.3.3 | Design Review |  | 0.2d | 2005-09-23 | 2005-09-23 | 58 | 0d |  |  | Kunal; Vinay; SAIC; Avinash | 6.4h |
| 60 | 2.4.1.1.1.3.4 | Update Design |  | 1d | 2005-09-23 | 2005-09-26 | 59 | 0d |  |  | Kunal [75%] | 6h |
| 61 | 2.4.1.1.1.3.5 | Design Baselined/Sign Off |  | 0.2d | 2005-09-26 | 2005-09-26 | 60 | 0d |  |  | Kunal; Vinay; SAIC; Avinash | 6.4h |
| 62 | 2.4.2 | **Iteration 2** |  | 6.2d | 2005-09-23 | 2005-10-03 |  | 28.35d |  |  |  | 53.04h |
| 63 | 2.4.2.1 | **Analysis & Design** |  | 6.2d | 2005-09-23 | 2005-10-03 |  | 28.35d |  |  |  | 53.04h |
| 64 | 2.4.2.1.1 | **Enhanced Logging** |  | 6.2d | 2005-09-23 | 2005-10-03 |  | 28.35d |  |  |  | 53.04h |
| 65 | 2.4.2.1.1.1 | **Detail Use Case Development** |  | 3d | 2005-09-28 | 2005-10-03 |  | 25.15d |  |  |  | 24h |
| 66 | 2.4.2.1.1.1.1 | Level 2 Use Cases |  | 3d | 2005-09-28 | 2005-10-03 | 52 | 25.15d | 0d |  | Eric | 24h |
| 67 | 2.4.2.1.1.2 | **Design** |  | 4.4d | 2005-09-23 | 2005-09-29 |  | 93.75d |  |  |  | 29.04h |
| 68 | 2.4.2.1.1.2.1 | Detail Design |  | 3d | 2005-09-23 | 2005-09-28 | 57 | 93.75d | 0d |  | Vinay [50%] | 12h |
| 69 | 2.4.2.1.1.2.2 | Design Review |  | 0.2d | 2005-09-28 | 2005-09-28 | 68 | 93.75d | 0d |  | Kunal; Vinay; Eric; Charles | 5.04h |
| 70 | 2.4.2.1.1.2.3 | Update Design |  | 1d | 2005-09-28 | 2005-09-29 | 69 | 93.75d | 0d |  | Vinay [50%] | 4h |
| 71 | 2.4.2.1.1.2.4 | Design Baselined/Sign Off |  | 0.2d | 2005-09-29 | 2005-09-29 | 70 | 93.75d |  |  | Kunal; Vinay; Eric; Charles; Avinash | 8h |
| 72 | 2.4.3 | **Iteration 3** |  | 38d | 2005-10-03 | 2005-11-29 |  | 25.15d |  |  |  | 206.6h |
| 73 | 2.4.3.1 | **Analysis & Design** |  | 38d | 2005-10-03 | 2005-11-29 |  | 25.15d |  |  |  | 206.6h |
| 74 | 2.4.3.1.1 | **Hibernate Upgrade** |  | 13.9d | 2005-10-17 | 2005-11-03 |  | 26.3d |  |  |  | 121.6h |
| 75 | 2.4.3.1.1.1 | Define Approach |  | 12d | 2005-10-17 | 2005-11-01 |  | 26.3d | 0d | start no earlier than 2005-10-17 | Resource 4 | 96h |
| 76 | 2.4.3.1.1.2 | Approach Review |  | 0.2d | 2005-11-02 | 2005-11-02 | 75 | 26.3d | 0d |  | Kunal [75%]; Charles; Eric; Vinay | 6h |
| 77 | 2.4.3.1.1.3 | Update Approach |  | 1.5d | 2005-11-02 | 2005-11-03 | 76 | 26.3d | 0d |  | Resource 4 | 12h |
| 78 | 2.4.3.1.1.4 | Approach Baselined/Sign Off |  | 0.2d | 2005-11-03 | 2005-11-03 | 77 | 26.3d | 0d |  | Kunal [75%]; Charles; Eric; Vinay; Resource 4 | 7.6h |

| ID | WBS | Task | Type | Duration | Start | Finish | Predecessors | Total slack | Free slack | Constraint | Resources | Work |
| --- | --- | --- | --- | --- | --- | --- | --- | --- | --- | --- | --- | --- |
| 79 | 2.4.3.1.2 | **Authorization Caching** |  | 38d | 2005-10-03 | 2005-11-29 |  | 25.15d |  |  |  | 85h |
| 80 | 2.4.3.1.2.1 | **Detail Use Case Development** |  | 5d | 2005-10-03 | 2005-10-10 |  | 25.15d |  |  |  | 40h |
| 81 | 2.4.3.1.2.1.1 | Use Case # |  | 5d | 2005-10-03 | 2005-10-10 | 66 | 25.15d | 0d |  | Eric | 40h |
| 82 | 2.4.3.1.2.2 | **Design** |  | 5.8d | 2005-11-17 | 2005-11-29 |  | 31.95d |  |  |  | 45h |
| 83 | 2.4.3.1.2.2.1 | Detail Design |  | 5d | 2005-11-17 | 2005-11-28 | 115 | 31.95d | 0d | start no earlier than 2005-10-17 | Kunal [75%] | 30h |
| 84 | 2.4.3.1.2.2.2 | Design Doc Draft Complete | milestone | 0d | 2005-11-28 | 2005-11-28 | 83 | 31.95d | 0d |  | Kunal [75%] |  |
| 85 | 2.4.3.1.2.2.3 | Design Review |  | 0.3d | 2005-11-28 | 2005-11-28 | 84 | 31.95d | 0d |  | Kunal; Vinay; Eric; Charles; Resource 4 | 12h |
| 86 | 2.4.3.1.2.2.4 | Update Design |  | 0.5d | 2005-11-28 | 2005-11-29 | 85 | 31.95d | 0d |  | Kunal [75%] | 3h |
| 87 | 2.4.3.1.2.2.5 | Design Baselined/Sign Off | milestone | 0d | 2005-11-29 | 2005-11-29 | 86 | 31.95d | 0d |  | Kunal [75%] |  |
| 88 | 2.4.4 | **Iteration 4** |  | 39.2d | 2005-10-10 | 2005-12-07 |  | 25.15d |  |  |  | 272h |
| 89 | 2.4.4.1 | **Test Plan** |  | 39.2d | 2005-10-10 | 2005-12-07 | 81 | 25.15d |  |  |  | 184h |
| 90 | 2.4.4.1.1 | Overall Test Plan |  | 5d | 2005-10-10 | 2005-10-17 |  | 25.15d | 0d |  | Eric | 40h |
| 91 | 2.4.4.1.2 | SDK Integration |  | 5d | 2005-10-17 | 2005-10-24 | 90 | 25.15d | 0d |  | Eric | 40h |
| 92 | 2.4.4.1.3 | Enhanced Logging |  | 4d | 2005-11-17 | 2005-11-23 | 115 | 47.75d | 0d |  | Eric | 32h |
| 93 | 2.4.4.1.4 | Authorization Caching |  | 4d | 2005-11-23 | 2005-12-01 | 92 | 47.75d | 0d |  | Eric | 32h |
| 94 | 2.4.4.1.5 | Regression Tests for Hibernate Upgrade |  | 4d | 2005-12-01 | 2005-12-07 | 93 | 47.75d |  |  | Eric | 32h |
| 95 | 2.4.4.1.6 | SOP Check (existing and new) |  | 1d | 2005-10-24 | 2005-10-25 | 91 | 25.15d | 0d |  | Eric | 8h |
| 96 | 2.4.4.2 | Cummalative Requirements Document |  | 5d | 2005-10-25 | 2005-11-01 | 95 | 25.15d | 0d |  | Eric | 40h |
| 97 | 2.4.4.3 | Traceability Matrix |  | 6d | 2005-11-01 | 2005-11-09 | 96 | 25.15d | 0.2d |  | Eric | 48h |
| 98 | 2.5 | **Construction Phase** |  | 83.75d | 2005-09-26 | 2006-01-27 |  | 0d |  |  |  | 1439.52h |
| 99 | 2.5.1 | **Iteration 1** |  | 37d | 2005-09-26 | 2005-11-17 |  | 0d |  |  |  | 371h |
| 100 | 2.5.1.1 | **SDK Integration** |  | 37d | 2005-09-26 | 2005-11-17 |  | 0d |  |  |  | 371h |
| 101 | 2.5.1.1.1 | **Development and Unit Test** |  | 30d | 2005-09-26 | 2005-11-07 |  | 0d |  |  |  | 289h |
| 102 | 2.5.1.1.1.1 | Merging ListProxy and SDKLIistProxy |  | 6d | 2005-09-26 | 2005-10-04 | 61 | 2d | 0d |  | Kunal [75%] | 36h |
| 103 | 2.5.1.1.1.2 | Merging ApplicationService and SDKApplicationService |  | 5.75d | 2005-10-04 | 2005-10-12 | 102 | 2d |  |  | Kunal [75%] | 34.5h |
| 104 | 2.5.1.1.1.3 | Business methods secured at class level |  | 13.75d | 2005-09-26 | 2005-10-14 | 61 | 0d |  |  | Vinay [50%] | 55h |
| 105 | 2.5.1.1.1.4 | Merge Build file to have single generation process |  | 9d | 2005-10-14 | 2005-10-27 | 106 | 0d |  |  | Kunal [75%] | 54h |
| 106 | 2.5.1.1.1.5 | Code Review |  | 0.25d | 2005-10-14 | 2005-10-14 | 103, 104 | 0d |  |  | Kunal; Vinay; Eric | 6h |
| 107 | 2.5.1.1.1.6 | Flag to add writeable apis to generated code |  | 6d | 2005-10-14 | 2005-10-24 | 106 | 24.95d | 0d |  | Vinay [50%] | 24h |
| 108 | 2.5.1.1.1.7 | Turn Security off by default |  | 6d | 2005-10-24 | 2005-11-01 | 107 | 24.95d | 0d |  | Vinay [50%] | 24h |
| 109 | 2.5.1.1.1.8 | Enhance Security Error Reporting |  | 3.75d | 2005-11-01 | 2005-11-07 | 108 | 24.95d | 0d |  | Vinay [50%] | 15h |
| 110 | 2.5.1.1.1.9 | Code Merge and Cleanup |  | 5.75d | 2005-10-27 | 2005-11-04 | 105 | 0d |  |  | Kunal [75%] | 34.5h |
| 111 | 2.5.1.1.1.10 | Code Review |  | 0.25d | 2005-11-07 | 2005-11-07 | 110, 109 | 24.95d | 0d |  | Kunal; Vinay; Eric | 6h |
| 112 | 2.5.1.1.1.11 | Development and Unit Test Complete | milestone | 0d | 2005-11-07 | 2005-11-07 | 111 | 24.95d | 0d |  | Kunal; Vinay |  |

| ID | WBS | Task | Type | Duration | Start | Finish | Predecessors | Total slack | Free slack | Resources | Work |
| --- | --- | --- | --- | --- | --- | --- | --- | --- | --- | --- | --- |
| 113 | 2.5.1.1.2 | **Integration Test** |  | 7d | 2005-11-07 | 2005-11-17 |  | 24.95d |  |  | 82h |
| 114 | 2.5.1.1.2.1 | Develop Integration Tests |  | 2d | 2005-11-07 | 2005-11-09 | 112 | 24.95d | 0d | Kunal [75%] | 12h |
| 115 | 2.5.1.1.2.2 | Execute Integration Tests |  | 5d | 2005-11-09 | 2005-11-17 | 114, 97 | 24.95d | 0d | Kunal [75%]; Eric | 70h |
| 116 | 2.5.2 | **Iteration 2** |  | 32d | 2005-11-04 | 2005-12-23 |  | 0d |  |  | 128h |
| 117 | 2.5.2.1 | **Enhanced Logging** |  | 32d | 2005-11-04 | 2005-12-23 |  | 0d |  |  | 128h |
| 118 | 2.5.2.1.1 | Development and Unit Test |  | 25d | 2005-11-04 | 2005-12-14 | 110 | 0d |  | Vinay [50%] | 100h |
| 119 | 2.5.2.1.2 | Development and Unit Test Complete | milestone | 0d | 2005-12-14 | 2005-12-14 | 118 | 0d |  | Vinay [50%] |  |
| 120 | 2.5.2.1.3 | Develop Integration Test |  | 2d | 2005-12-14 | 2005-12-16 | 119 | 0d |  | Vinay [50%] | 8h |
| 121 | 2.5.2.1.4 | Execute Integration Tests |  | 5d | 2005-12-16 | 2005-12-23 | 120 | 0d |  | Vinay [50%] | 20h |
| 122 | 2.5.3 | **Iteration 3** |  | 43.55d | 2005-11-03 | 2006-01-11 |  | 24.95d |  |  | 408.52h |
| 123 | 2.5.3.1 | **Hibernate Upgrade** |  | 30d | 2005-11-03 | 2005-12-20 |  | 26.3d |  |  | 276.52h |
| 124 | 2.5.3.1.1 | Development and Unit Test |  | 20d | 2005-11-03 | 2005-12-06 | 78 | 26.3d | 0d | Resource 4 | 160h |
| 125 | 2.5.3.1.2 | Development and Unit Test Complete | milestone | 0d | 2005-12-06 | 2005-12-06 | 124 | 26.3d | 0d | Resource 4 |  |
| 126 | 2.5.3.1.3 | Regression Testing |  | 10d | 2005-12-06 | 2005-12-20 | 125 | 26.3d | 0d | Resource 4; Eric | 116.52h |
| 127 | 2.5.3.2 | **Authorization Caching** |  | 29d | 2005-11-29 | 2006-01-11 |  | 24.95d |  |  | 132h |
| 128 | 2.5.3.2.1 | Development and Unit Test |  | 15d | 2005-11-29 | 2005-12-20 | 87 | 31.95d | 0d | Kunal [75%] | 90h |
| 129 | 2.5.3.2.2 | Development and Unit Test Complete | milestone | 0d | 2005-12-20 | 2005-12-20 | 128 | 31.95d | 0d | Kunal [75%] |  |
| 130 | 2.5.3.2.3 | Develop Integration Test |  | 2d | 2005-12-20 | 2006-01-04 | 129 | 24.95d | 0d | Kunal [75%] | 12h |
| 131 | 2.5.3.2.4 | Execute Integration Test |  | 5d | 2006-01-04 | 2006-01-11 | 130 | 24.95d |  | Kunal [75%] | 30h |
| 132 | 2.5.4 | **Iteration 4** |  | 25.5d | 2005-12-20 | 2006-01-27 |  | 2.5d |  |  | 532h |
| 133 | 2.5.4.1 | **Document Creation** |  | 15.3d | 2005-12-20 | 2006-01-13 |  | 23.2d |  |  | 208h |
| 134 | 2.5.4.1.1 | SDK Programmers Guide |  | 10d | 2005-12-27 | 2006-01-10 | 126 | 23.2d | 0d | Eric | 80h |
| 135 | 2.5.4.1.2 | Review |  | 0.2d | 2006-01-11 | 2006-01-11 | 134 | 23.2d | 0d | Eric; Kunal; Vinay; Resource 4; Charles | 8h |
| 136 | 2.5.4.1.3 | Update from Review |  | 2d | 2006-01-11 | 2006-01-13 | 135 | 23.2d |  | Eric | 16h |
| 137 | 2.5.4.1.4 | CSM Guide For Application Developers |  | 10d | 2005-12-20 | 2006-01-05 | 126 | 26.3d | 0d | Resource 4 | 80h |
| 138 | 2.5.4.1.5 | Review |  | 0.2d | 2006-01-05 | 2006-01-06 | 137 | 26.3d | 0d | Eric; Kunal; Vinay; Resource 4; Charles | 8h |
| 139 | 2.5.4.1.6 | Update From Review |  | 2d | 2006-01-06 | 2006-01-10 | 138 | 26.3d | 0d | Resource 4 | 16h |
| 140 | 2.5.4.1.7 | Baseline/SignOff Documents | milestone | 0d | 2006-01-10 | 2006-01-10 | 139 | 26.3d |  | Resource 4 |  |

| ID | WBS | Task | Type | Duration | Start | Finish | Predecessors | Total slack | Resources | Work |
| --- | --- | --- | --- | --- | --- | --- | --- | --- | --- | --- |
| 141 | 2.5.4.2 | **QA Testing** |  | 23d | 2005-12-23 | 2006-01-27 |  | 0d |  | 324h |
| 142 | 2.5.4.2.1 | Technical Test Development |  | 10d | 2005-12-23 | 2006-01-10 | 121 | 0d | Vinay [50%] | 40h |
| 143 | 2.5.4.2.2 | Execution/Defect Fixes |  | 10d | 2006-01-10 | 2006-01-24 | 142 | 0d | Eric; Vinay [50%]; Kunal [75%]; Resource 4 | 260h |
| 144 | 2.5.4.2.3 | Testing Report Creation |  | 3d | 2006-01-24 | 2006-01-27 | 143 | 13d | Eric | 24h |
| 145 | 2.6 | **Transition Phase** |  | 16d | 2006-01-24 | 2006-02-15 |  | 0d |  | 259.71h |
| 146 | 2.6.1 | Deployment to Stage |  | 3d | 2006-01-24 | 2006-01-27 | 143 | 0d | Resource 4 | 24h |
| 147 | 2.6.2 | SOP Updates |  | 3d | 2006-01-27 | 2006-02-01 | 146 | 0d | Kunal [75%]; Vinay [50%] | 19.71h |
| 148 | 2.6.3 | Stage Testing |  | 5d | 2006-02-01 | 2006-02-08 | 147 | 0d | Eric; Vinay [50%]; Kunal [75%]; Resource 4 | 130h |
| 149 | 2.6.4 | Testing Report |  | 2d | 2006-02-08 | 2006-02-10 | 148 | 3d | Eric | 16h |
| 150 | 2.6.5 | **Deployment to Production** |  | 5d | 2006-02-08 | 2006-02-15 |  | 0d |  | 70h |
| 151 | 2.6.5.1 | Update Zope Site |  | 5d | 2006-02-08 | 2006-02-15 | 148 | 0d | Kunal [75%] | 30h |
| 152 | 2.6.5.2 | Work With Operations/ Finalize Builds |  | 5d | 2006-02-08 | 2006-02-15 | 148 | 0d | Resource 4 | 40h |
| 153 | 2.7 | CSM 3.1 Complete | milestone | 0d | 2006-02-15 | 2006-02-15 | 150 | 0d |  |  |
